# National Health Campaign

Schedule from MS Project, 2024-02-29 to 2024-05-07, costs in €, A marks actual dates.
Research Program
ABC Research LTD.

## Calendars

- Standard: Mon-Fri 08:00-12:00, 13:00-17:00; Sat-Sun off.

## Resources

| Resource | Rate |
| --- | --- |
| Joanne Kelly | 19.23 |
| Riona Carr | 6.25 |
| Mary Breen | 19.23 |
| Tom Joyce | 6.88 |
| Conf Room |  |
| Junior Staff | 3.75 |
| Printing |  |

## Schedule

| ID | WBS | Task | Type | Duration | Start | Finish | Predecessors | Complete | Remaining | Baseline start | Baseline finish | Baseline duration | Total slack | Resources | Work | Actual work | Cost | Actual cost |
| --- | --- | --- | --- | --- | --- | --- | --- | --- | --- | --- | --- | --- | --- | --- | --- | --- | --- | --- |
| 1 | 1 | **Narional Health campaign** |  | 48.5d | 2024-02-29 A | 2024-05-07 |  | 62% | 18.46d | 2024-02-29 | 2024-03-29 | 21d | 0d |  | 480h | 365h | 4,763.27 | 4,155.77 |
| 2 | 1.1 | **Planning** |  | 11d | 2024-02-29 A | 2024-03-15 |  | 88% | 1.38d | 2024-02-29 | 2024-03-15 | 11d | 0d |  | 96h | 84h | 517.69 | 442.69 |
| 3 | 1.1.1 | Design Questionnaire | manual | 2d | 2024-02-29 A | 2024-03-01 A |  | 100% |  | 2024-02-29 | 2024-03-01 | 2d |  | Joanne Kelly | 16h | 16h | 307.69 | 307.69 |
| 4 | 1.1.2 | type questionnaire | manual | 2d | 2024-03-04 A | 2024-03-05 A | 3 | 100% |  | 2024-03-04 | 2024-03-04 | 1d |  | Junior Staff | 16h | 16h | 60 | 60 |
| 5 | 1.1.3 | print questionnaire | manual | 1w | 2024-03-05 A | 2024-03-11 A | 4 | 100% |  | 2024-03-05 | 2024-03-11 | 1w |  | Printing | 40h | 40h |  |  |
| 6 | 1.1.4 | invite interviewers of briefing meeting | manual | 3d | 2024-03-07 A | 2024-03-11 | 5FF | 50% | 1.5d | 2024-03-12 | 2024-03-14 | 3d |  | Riona Carr | 24h | 12h | 150 | 75 |
| 7 | 1.1.5 | survey planning complete | milestone, manual | 0d | 2024-03-15 A | 2024-03-15 | 6 | 25% | 0d | 2024-03-15 | 2024-03-15 | 0d |  |  |  |  |  |  |
| 8 | 1.2 | **Briefing setup** |  | 10d | 2024-03-15 A | 2024-03-29 |  | 67% | 3.3d | 2024-03-15 | 2024-03-29 | 10d | 0d |  | 108h | 72h | 742.5 | 495 |
| 9 | 1.2.1 | Book conference room for briefing meeting | manual | 4h | 2024-03-15 A | 2024-03-15 A | 7, 5 | 100% |  | 2024-03-19 | 2024-03-19 | 4h |  | Tom Joyce | 4h | 4h | 27.5 | 27.5 |
| 10 | 1.2.2 | Contact interviewing locations | manual | 2d | 2024-03-15 A | 2024-03-19 | 9 | 75% | 0.5d | 2024-03-15 | 2024-03-18 | 2d |  | Tom Joyce | 16h | 12h | 110 | 82.5 |
| 11 | 1.2.3 | Prepare rosters | manual | 8d | 2024-03-15 A | 2024-03-27 | 10SS | 50% | 4d | 2024-03-19 | 2024-03-25 | 4d |  | Tom Joyce | 64h | 32h | 440 | 220 |
| 12 | 1.2.4 | prepare packs for each interviewer | manual | 3d | 2024-03-25 A | 2024-03-28 A | 11 | 100% |  | 2024-03-25 | 2024-03-28 | 3d |  | Tom Joyce | 24h | 24h | 165 | 165 |
| 13 | 1.2.5 | Briefing meeting with interviewers | manual | 4h | 2024-03-28 A | 2024-03-28 | 12 | 75% | 1h | 2024-03-28 | 2024-03-28 | 4h |  |  |  |  |  |  |
| 14 | 1.2.6 | Interviewers briefing complete | milestone, manual | 0d | 2024-03-29 A | 2024-03-29 | 13 | 75% | 0d | 2024-03-29 | 2024-03-29 | 0d |  |  |  |  |  |  |
| 15 | 1.3 | **Data processing** |  | 25d | 2024-03-25 A | 2024-04-29 |  | 21% | 19.71d | 2024-02-29 | 2024-03-11 | 7.5d | 0d |  | 100h | 33h | 415 | 130 |
| 16 | 1.3.1 | prepare book-in forms | manual | 2d | 2024-03-29 A | 2024-04-01 | 14 | 16% | 1.69d | 2024-02-29 | 2024-03-01 | 2d |  | Riona Carr | 16h | 2.5h | 100 | 15.62 |
| 17 | 1.3.2 | Check questionnaires | milestone, manual | 0d | 2024-04-02 | 2024-04-02 | 16 |  |  | 2024-02-29 | 2024-03-01 | 2d |  | Junior Staff |  |  |  |  |
| 18 | 1.3.3 | Code questionnairess | manual | 1.5w | 2024-03-25 A | 2024-04-03 | 17FF | 51% | 0.74w | 2024-02-29 | 2024-03-11 | 1.5w |  | Junior Staff | 60h | 30.5h | 225 | 114.38 |
| 19 | 1.3.4 | input data into computer | manual | 3d | 2024-04-01 | 2024-04-03 | 18FS-3d |  |  | 2024-02-29 | 2024-03-04 | 3d |  | Junior Staff | 24h |  | 90 |  |
| 20 | 1.3.5 | analyse the data | manual | 2d | 2024-04-18 | 2024-04-22 | 19 |  |  | 2024-02-29 | 2024-03-01 | 2d |  |  |  |  |  |  |
| 21 | 1.3.6 | data processiing complete | manual | 5d | 2024-04-22 A | 2024-04-29 | 20 |  | 5d | 2024-02-29 | 2024-02-29 | 0d |  |  |  |  |  |  |
| 22 | 1.4 | **Interpretation** |  | 11d | 2024-04-22 A | 2024-05-07 A |  | 100% |  | 2024-02-29 | 2024-03-06 | 5d |  |  | 176h | 176h | 3,088.08 | 3,088.08 |
| 23 | 1.4.1 | prepare presentation | manual | 3d | 2024-04-22 A | 2024-04-25 A | 21 | 100% |  | 2024-02-29 | 2024-03-04 | 3d |  | Joanne Kelly; Tom Joyce | 48h | 48h | 626.54 | 626.54 |
| 24 | 1.4.2 | prepare research report | manual | 8d | 2024-04-25 A | 2024-05-07 A | 23 | 100% |  | 2024-02-29 | 2024-03-06 | 1w |  | Mary Breen; Joanne Kelly | 128h | 128h | 2,461.54 | 2,461.54 |
| 25 | 1.4.3 | project complete | milestone, manual | 0w | 2024-05-02 A | 2024-05-02 A | 24 | 100% |  | 2024-02-29 | 2024-02-29 | 0w |  | Mary Breen; Joanne Kelly |  |  |  |  |
